# Relaunch der RZ-Webseite

Schedule from MS Project, 2015-05-08 to 2015-09-30, A marks actual dates.

## Calendars

- Standard: Mon-Fri 08:00-12:00, 13:00-17:00; Sat-Sun off.

## Resources

| Resource |
| --- |
| Alle Teammitglieder |
| Bauer, Huth, Vogl |
| Häring |
| Bauer |
| Häring, Huth |
| Häring, Vogl |
| Häring, Huth, Vogl |
| Huth |
| Fabian Huth |
| Bauer, Häring |
| Huth, Vogl |

## Schedule

| ID | WBS | Task | Type | Duration | Start | Finish | Predecessors | Complete | Remaining | Total slack | Resources | Work | Actual work |
| --- | --- | --- | --- | --- | --- | --- | --- | --- | --- | --- | --- | --- | --- |
| 1 | 1 | **Projektstart und Feldlegung des Projektumfanges** |  | 3d | 2015-05-08 A | 2015-05-12 A |  | 100% |  |  |  | 24h | 24h |
| 2 | 1.1 | Kick-Off Meeting mit den Stakeholdern | manual | 1d | 2015-05-08 A | 2015-05-08 A |  | 100% |  |  | Alle Teammitglieder | 8h | 8h |
| 3 | 1.2 | RZ-Mitarbeiterschulung (Imperia) | manual | 1d | 2015-05-11 A | 2015-05-11 A | 2 | 100% |  |  | Alle Teammitglieder | 8h | 8h |
| 4 | 1.3 | Festlegung des Projektumfangs mit Raphael Wimmer | manual | 1d | 2015-05-12 A | 2015-05-12 A | 3 | 100% |  |  | Alle Teammitglieder | 8h | 8h |
| 5 | 2 | **Anforderungsanalyse** |  | 83d | 2015-05-13 A | 2015-09-04 |  | 93% | 5.75d | 0d |  | 808h | 752h |
| 6 | 2.1 | Konkurrenzanalyse anderer deutschsprachiger RZ-Webseiten | manual | 7d | 2015-05-13 A | 2015-05-21 A |  | 100% |  |  | Bauer, Huth, Vogl | 56h | 56h |
| 7 | 2.2 | Konkurrenzanalyse internationaler RZ-Webseiten | manual | 7d | 2015-05-13 A | 2015-05-21 A |  | 100% |  |  | Häring | 56h | 56h |
| 8 | 2.3 | Einarbeitung in Piwik | manual | 6d | 2015-05-22 A | 2015-05-29 A |  | 100% |  |  | Bauer | 48h | 48h |
| 9 | 2.4 | Erstellung einer Sitemap der aktuellen Inhalte der Webseite | manual | 5d | 2015-05-22 A | 2015-05-28 A |  | 100% |  |  | Häring, Huth, Vogl | 40h | 40h |
| 10 | 2.5 | Hintergrundrecherche zum Crawlen von Webseiten | manual | 1d | 2015-05-29 A | 2015-05-29 A |  | 100% |  |  | Huth | 8h | 8h |
| 11 | 2.6 | Analyse der Inhalte der aktuellen RZ-Webseite | manual | 2w | 2015-06-15 A | 2015-06-26 A |  | 100% |  |  | Huth | 80h | 80h |
| 12 | 2.7 | Contextual Inquiry (Studierende + Mitarbeiter) | manual | 2w | 2015-06-15 A | 2015-06-26 A |  | 100% |  |  | Alle Teammitglieder | 80h | 80h |
| 13 | 2.8 | Piwik-Analyse | manual | 2w | 2015-06-15 A | 2015-06-26 A |  | 100% |  |  | Bauer | 80h | 80h |
| 14 | 2.9 | Erstellung des SRS-Templates | manual | 2w | 2015-06-29 A | 2015-07-10 A |  | 100% |  |  | Häring, Huth | 80h | 80h |
| 15 | 2.10 | Besprechung und Verbesserung des SRS-Templats | manual | 1w | 2015-07-13 A | 2015-07-17 A |  | 100% |  |  | Alle Teammitglieder | 40h | 40h |
| 16 | 2.11 | Erstellung des Fragebogens | manual | 2w | 2015-07-27 A | 2015-08-07 A |  | 100% |  |  | Alle Teammitglieder | 80h | 80h |
| 17 | 2.12 | Überarbeitung des Fragebogens | manual | 1w | 2015-08-10 A | 2015-08-14 A |  | 100% |  |  | Alle Teammitglieder | 40h | 40h |
| 18 | 2.13 | Recherche über Online-Cardsorting | manual | 3d | 2015-08-17 A | 2015-08-19 A |  | 100% |  |  | Fabian Huth | 24h | 24h |
| 19 | 2.14 | Vorbereitung des Online-Cardsorting | manual | 1w | 2015-08-24 A | 2015-08-28 A |  | 100% |  |  | Alle Teammitglieder | 40h | 40h |
| 20 | 2.15 | Auswertung des Fragebogens | manual | 2d | 2015-08-31 | 2015-09-01 |  |  |  |  | Huth, Vogl | 16h |  |
| 21 | 2.16 | Auswertung des Card Sortings | manual | 2d | 2015-08-31 | 2015-09-01 |  |  |  |  | Bauer, Häring | 16h |  |
| 22 | 2.17 | Zusammenfassung der bisher erlangten Ergebnisse | manual | 3d | 2015-09-02 | 2015-09-04 |  |  |  |  | Alle Teammitglieder | 24h |  |
| 23 | 3 | **Erstellung des Prototypen** |  | 5d | 2015-09-07 | 2015-09-11 |  |  |  | 0d |  | 40h |  |
| 24 | 3.1 | Erarbeitung eines neuen Konzepts | manual | 3d | 2015-09-07 | 2015-09-09 |  |  |  |  | Alle Teammitglieder | 24h |  |
| 25 | 3.2 | Implementierung des neuen Konzepts mit Hilfe von Imperia | manual | 2d | 2015-09-10 | 2015-09-11 | 24 |  |  |  | Alle Teammitglieder | 16h |  |

| ID | WBS | Task | Type | Duration | Start | Finish | Predecessors | Total slack | Resources | Work |
| --- | --- | --- | --- | --- | --- | --- | --- | --- | --- | --- |
| 26 | 4 | **Test des Protoypen** |  | 12d | 2015-09-14 | 2015-09-30 |  | 0d |  | 96h |
| 27 | 4.1 | Erstellung der Testszenarien | manual | 2d | 2015-09-14 | 2015-09-15 |  |  | Huth, Vogl | 16h |
| 28 | 4.2 | Durchführung der Tests | manual | 3d | 2015-09-16 | 2015-09-18 | 27 |  | Bauer, Häring | 24h |
| 29 | 4.3 | Auswertung der Tets | manual | 2d | 2015-09-21 | 2015-09-22 | 28 |  | Huth, Vogl | 16h |
| 30 | 4.4 | Besprechung der Ergebnisse | manual | 1d | 2015-09-23 | 2015-09-23 | 29 |  | Alle Teammitglieder | 8h |
| 31 | 4.5 | Überarbeitung des Prototypen | manual | 2d | 2015-09-24 | 2015-09-25 | 30 |  | Alle Teammitglieder | 16h |
| 32 | 4.6 | Fertigstellung der Dokumente | manual | 2d | 2015-09-28 | 2015-09-29 | 31 |  | Alle Teammitglieder | 16h |
| 33 | 4.7 | Projektabgabe | milestone, manual | 0d | 2015-09-30 | 2015-09-30 | 32 |  |  |  |
